# Projet GL

Schedule from Planner, 2023-01-03 to 2023-01-26.
Ensimag

## Calendars

- Default: Mon-Fri 09:00-12:30, 14:00-18:30; Sat-Sun 14:00-18:00.

## Resources

| Resource |
| --- |
| Jorge |
| Logan |
| Nils |
| Virgile |
| Vianney |

## Schedule

| ID | WBS | Task | Duration | Start | Finish | Predecessors | Complete | Resources | Work |
| --- | --- | --- | --- | --- | --- | --- | --- | --- | --- |
| 1 | 1 | **Sprint 1: Hello World** |  | 2023-01-03 09:00 | 2023-01-07 17:00 |  | 100% | Jorge; Logan; Nils; Virgile; Vianney | 109h |
| 2 | 1.1 | A. Compréhension du sujet VV | 0.5d | 2023-01-04 15:30 | 2023-01-05 10:00 | 24 | 100% | Vianney | 4h |
| 3 | 1.2 | A. Compréhension du sujet J | 0.5d | 2023-01-04 14:30 | 2023-01-04 18:30 | 21 | 100% | Jorge | 4h |
| 4 | 1.3 | A. Analyse lexicale | 1d | 2023-01-05 09:00 | 2023-01-05 18:30 | 3 | 100% | Jorge | 8h |
| 5 | 1.4 | A. Scripts tests lexical auto | 0.25d | 2023-01-05 10:00 | 2023-01-05 12:00 | 2 | 100% | Vianney | 2h |
| 6 | 1.5 | A. Compréhension syntaxique VV | 0.5d | 2023-01-05 12:00 | 2023-01-05 17:30 | 5 | 100% | Vianney | 4h |
| 7 | 1.6 | A. Compéhension syntaxique J | 0.5d | 2023-01-06 09:00 | 2023-01-06 14:30 | 4 | 100% | Jorge | 4h |
| 8 | 1.7 | A. Construction de l'arbre | 0.5d | 2023-01-05 17:30 | 2023-01-06 12:00 | 6 | 100% | Vianney | 4h |
| 9 | 1.8 | A. Décompilation de l'arbre sans objet | 1d | 2023-01-03 09:00 | 2023-01-03 18:30 |  | 100% | Jorge | 8h |
| 10 | 1.9 | A. Scripts tests syntaxique auto | 0.25d | 2023-01-06 12:00 | 2023-01-06 15:30 | 8 |  | Vianney | 2h |
| 11 | 1.10 | A. Scripts tests décompilation | 0d | 2023-01-06 14:30 | 2023-01-06 14:30 | 7 |  | Jorge |  |
| 12 | 1.11 | B. Analyse du sujet | 2.5d | 2023-01-04 11:00 | 2023-01-06 16:30 | 23 | 100% | Logan [50%]; Nils [50%] | 20h |
| 13 | 1.12 | B. Création d'une base de tests valides | 0.25d | 2023-01-06 16:30 | 2023-01-06 18:30 | 12 | 100% | Logan [50%]; Nils [50%] | 2h |
| 14 | 1.13 | B. Fonction de vérification contextuelle | 0.25d | 2023-01-07 15:00 | 2023-01-07 17:00 | 15 | 100% | Logan [50%]; Nils [50%] | 2h |
| 15 | 1.14 | B. Décoration de l'arbre | 0.12d | 2023-01-07 14:00 | 2023-01-07 15:00 | 13 | 100% | Logan [50%]; Nils [50%] | 1h |
| 16 | 1.15 | C. Compréhension sujet |  | 2023-01-03 09:00 | 2023-01-03 18:30 |  | 100% | Virgile | 8h |
| 17 | 1.16 | C. Analyse du code fourni |  | 2023-01-04 09:00 | 2023-01-04 18:30 | 16 | 100% | Virgile | 8h |
| 18 | 1.17 | C. Parser options + source/cible |  | 2023-01-05 09:00 | 2023-01-05 18:30 | 17 | 100% | Virgile | 8h |
| 19 | 1.18 | C. Génération du code assembleur |  | 2023-01-06 09:00 | 2023-01-06 18:30 | 18 | 100% | Virgile | 8h |
| 20 | 1.19 | G. Charte d'équipe | 0.5d | 2023-01-03 09:00 | 2023-01-03 14:30 |  | 100% | Jorge [20%]; Logan [20%]; Nils [20%]; Virgile [20%]; Vianney [20%] | 4h |
| 21 | 1.20 | G. Organisation Git | 0.25d | 2023-01-04 11:00 | 2023-01-04 14:30 | 23 | 86% | Jorge | 2h |
| 22 | 1.21 | G. SWOT + fiches indiv | 0.12d | 2023-01-03 14:30 | 2023-01-03 15:30 | 20 | 100% | Jorge [20%]; Logan [20%]; Nils [20%]; Virgile [20%]; Vianney [20%] | 1h |
| 23 | 1.22 | G. Création des users stories | 0.25d | 2023-01-04 09:00 | 2023-01-04 11:00 | 25 | 100% | Jorge [20%]; Logan [20%]; Nils [20%]; Virgile [20%]; Vianney [20%] | 2h |
| 24 | 1.23 | G. Planning | 0.38d | 2023-01-04 11:00 | 2023-01-04 15:30 | 23 | 100% | Vianney [67%] | 2h |
| 25 | 1.24 | G. Config outils | 0.38d | 2023-01-03 15:30 | 2023-01-03 18:30 | 22 | 100% | Jorge [7%]; Logan [7%]; Nils [7%]; Virgile [7%]; Vianney [7%] | 1h |

| ID | WBS | Task | Type | Duration | Start | Finish | Predecessors | Constraint | Resources | Work |
| --- | --- | --- | --- | --- | --- | --- | --- | --- | --- | --- |
| 26 | 2 | **Sprint 2: Sans objet** |  |  | 2023-01-07 17:00 | 2023-01-10 11:30 | 1 |  | Jorge; Logan; Nils; Virgile; Vianney | 15.5h |
| 27 | 2.1 | ... |  |  | 2023-01-07 17:00 | 2023-01-10 11:30 |  |  |  | 15.5h |
| 28 | 3 | **Compilateur sans objet** |  |  | 2023-01-10 11:30 | 2023-01-12 11:30 | 26 |  | Jorge; Logan; Nils; Virgile; Vianney | 16h |
| 29 | 3.1 | ... |  |  | 2023-01-10 11:30 | 2023-01-12 11:30 |  |  |  | 16h |
| 30 | 4 | Compilateur pour la totalité du langage |  |  | 2023-01-03 09:00 | 2023-01-05 18:30 |  |  |  | 24h |
| 31 | 5 | Rendu version intermédiaire | milestone | 0d | 2023-01-16 09:00 | 2023-01-16 00:00 |  | must start on 2023-01-16 00:00 |  |  |
| 32 | 6 | Rendu Final | milestone | 0d | 2023-01-23 09:00 | 2023-01-23 00:00 |  | must start on 2023-01-23 00:00 |  |  |
| 33 | 7 | Rendu Bilan | milestone | 0d | 2023-01-25 09:00 | 2023-01-25 00:00 |  | must start on 2023-01-25 00:00 |  |  |
| 34 | 8 | Rendu documentation | milestone | 0d | 2023-01-23 09:00 | 2023-01-23 00:00 |  | must start on 2023-01-23 00:00 |  |  |
| 35 | 9 | Soutenance | milestone | 0d | 2023-01-26 09:00 | 2023-01-26 00:00 |  | must start on 2023-01-26 00:00 |  |  |
